# SwtichErgonomicoPlan3

How a schedule from MS Project changed from version to version. A marks actual dates.

## Version 1 (saved 2018-03-26, file Proyecto_Final_Planeacion3.mpp)

Note of the change: Primera configuración

| ID | WBS | Task | Duration | Start | Finish | Predecessors | Complete | Total float | Constraint |
| --- | --- | --- | --- | --- | --- | --- | --- | --- | --- |
| 1 |  | Definir nuevo plan | 1h | 2018-03-20 08:00 A | 2018-03-20 09:00 A |  | 100% |  |  |
| 2 |  | Prepar tarjeta de desarrollo | 1.5h | 2018-03-20 09:00 A | 2018-03-20 10:30 A | 1 | 100% |  |  |
| 3 |  | Entder compotentes del electromiografo | 2h | 2018-03-20 10:30 A | 2018-03-20 13:30 A | 2 | 100% |  |  |
| 4 |  | Comprar material primera parte | 0.2h | 2018-03-20 13:30 A | 2018-03-20 13:42 A | 3 | 100% |  |  |
| 5 |  | Rescribir Requerimientos | 2h | 2018-03-21 08:00 A | 2018-03-21 10:00 A |  | 100% |  | start no earlier than 2018-03-21 08:00 |
| 6 |  | Rediseñar Arquitectura de HW | 1h | 2018-03-21 10:00 A | 2018-03-21 11:00 A | 5 | 100% |  |  |
| 7 |  | Resdiseñar Arquitectura de SW | 1h | 2018-03-21 11:00 A | 2018-03-21 12:00 | 6 | 70% | 8.12d |  |
| 8 |  | Definir nuevo BOM | 0.5h | 2018-03-21 13:00 A | 2018-03-21 13:30 A | 7 | 100% |  |  |
| 9 |  | Comprar material segunda parte | 1h | 2018-03-21 13:30 A | 2018-03-21 14:30 A | 8 | 100% |  |  |
| 10 | 10 | **Prepar Hw de muestreo de Audio** | 0.88d | 2018-03-24 08:00 A | 2018-03-24 16:00 A |  | 100% |  |  |
| 11 |  | Ensablar circuito | 3h | 2018-03-24 08:00 A | 2018-03-24 11:00 A | 9, 17, 45 | 100% |  |  |
| 12 |  | Probar circuito | 4h | 2018-03-24 11:00 A | 2018-03-24 16:00 A | 11 | 100% |  |  |
| 13 |  | HW de muestreo terminado | 0d | 2018-03-24 16:00 A | 2018-03-24 16:00 A | 12 | 100% |  |  |
| 14 | 12 | **SW sistema minimo** | 0.38d | 2018-03-21 14:30 A | 2018-03-22 08:30 A |  | 100% |  |  |
| 15 |  | Integrar Drivers | 2h | 2018-03-21 14:30 A | 2018-03-21 16:30 A | 9 | 100% |  | start no earlier than 2018-03-21 08:00 |
| 16 |  | Integrar OS | 1h | 2018-03-21 16:30 A | 2018-03-22 08:30 A | 15 | 100% |  |  |
| 17 |  | Sistema minimo terminado | 0d | 2018-03-22 08:30 A | 2018-03-22 08:30 A | 16 | 100% |  |  |
| 18 | 14 | **Prepar SW de control** | 1d | 2018-03-24 16:00 | 2018-03-25 16:00 |  |  | -2.88d |  |
| 19 |  | Desarrollar Codigo de muestreo de Audio | 3h | 2018-03-24 16:00 | 2018-03-25 10:00 | 13, 17 |  | -2.88d |  |
| 20 |  | Probar codigo de muestreo de audio | 5h | 2018-03-25 10:00 | 2018-03-25 16:00 | 19 |  | -2.88d |  |
| 21 |  | SW inicial de muestreo terminado | 0d | 2018-03-25 16:00 | 2018-03-25 16:00 | 20 |  | -2.88d |  |
| 22 | 16 | **Preparar HW de salida de Audio** | 1d | 2018-03-25 16:00 | 2018-03-26 16:00 |  |  | -2.88d |  |
| 23 |  | Ensablar circuito | 3h | 2018-03-25 16:00 | 2018-03-26 10:00 | 9, 21 |  | -2.88d |  |
| 24 |  | probar circuito | 5h | 2018-03-26 10:00 | 2018-03-26 16:00 | 23 |  | -2.88d |  |
| 25 |  | HW de salida de audio terminado | 0d | 2018-03-26 16:00 | 2018-03-26 16:00 | 24 |  | -2.88d |  |
| 26 | 17 | **Preparar SW de salida de Audio** | 0.88d | 2018-03-26 16:00 | 2018-03-27 15:00 |  |  | -2.88d |  |
| 27 |  | Escribir SW de salida de audio | 3h | 2018-03-26 16:00 | 2018-03-27 10:00 | 25 |  | -2.88d |  |
| 28 |  | Probar SW de salida de audio | 4h | 2018-03-27 10:00 | 2018-03-27 15:00 | 27 |  | -2.88d |  |
| 29 |  | SW de salida de Audio terminado | 0d | 2018-03-27 15:00 | 2018-03-27 15:00 | 28 |  | -2.88d |  |
| 30 | 19 | **Preparar SW de distorción** | 1.12d | 2018-03-27 15:00 | 2018-03-28 16:00 |  |  | -2.88d |  |
| 31 |  | Integar SW de muestreo con el de salida de audio | 3h | 2018-03-27 15:00 | 2018-03-28 09:00 | 29, 21 |  | -2.88d |  |
| 32 |  | Escribir una distorción de audio | 3h | 2018-03-28 09:00 | 2018-03-28 12:00 | 31 |  | -2.88d |  |
| 33 |  | Probar activación y desactivación del SW de distorción | 3h | 2018-03-28 13:00 | 2018-03-28 16:00 | 32 |  | -2.88d |  |
| 34 |  | SW de distoricion integrado y probado | 0d | 2018-03-28 16:00 | 2018-03-28 16:00 | 33 |  | -2.88d |  |
| 35 |  | Recibir HW de envio con Electromiografo | 0d | 2018-03-22 08:00 A | 2018-03-22 08:00 A |  | 100% |  | start no earlier than 2018-03-22 08:00 |
| 36 | 21 | **Probar Electromiografo HW** | 0.56d | 2018-03-22 08:30 A | 2018-03-22 14:00 A |  | 100% |  |  |
| 37 |  | Medir Salida con osciloscopio | 1h | 2018-03-22 08:30 A | 2018-03-22 09:30 A | 35, 17 | 100% |  |  |
| 38 |  | Entender Señal del electromiografo | 1.5h | 2018-03-22 09:30 A | 2018-03-22 11:00 A | 37 | 100% |  |  |
| 39 |  | Identificar mejor lugar para medir señal | 2h | 2018-03-22 11:00 A | 2018-03-22 14:00 A | 38 | 100% |  |  |
| 40 |  | Puntos de meidición identificados | 0d | 2018-03-22 14:00 A | 2018-03-22 14:00 A | 39 | 100% |  |  |
| 41 | 23 | **Prepar SW de medición del electromiografo** | 1.38d | 2018-03-22 14:00 | 2018-03-23 17:00 |  |  | 4.88d |  |
| 42 |  | Escribir SW de muestreo del electromiografo | 3h | 2018-03-22 14:00 | 2018-03-22 17:00 | 40 |  | 4.88d |  |
| 43 |  | Escribir SW de detección del movimiento | 3h | 2018-03-23 08:00 | 2018-03-23 11:00 | 42 |  | 4.88d |  |
| 44 |  | Probar SW de detección del electromiografo | 5h | 2018-03-23 11:00 | 2018-03-23 17:00 | 43 |  | 4.88d |  |
| 45 |  | SW de detección de movimiento terminado | 0d | 2018-03-23 17:00 | 2018-03-23 17:00 | 44 |  | 4.88d |  |
| 46 | 25 | **Integargración del sistema** | 0.75d | 2018-03-28 16:00 | 2018-03-29 14:00 |  |  | 0d |  |
| 47 |  | Integrar SW de muestreo y salida de audio con deteccion de movimiento | 2h | 2018-03-28 16:00 | 2018-03-29 09:00 | 45, 34 |  | 0d |  |
| 48 |  | Pruebas de integración | 4h | 2018-03-29 09:00 | 2018-03-29 14:00 | 47 |  | 0d |  |
| 49 |  | Sistema integrado y probado | 0d | 2018-03-29 14:00 | 2018-03-29 14:00 | 48 |  | 0d |  |
| 50 |  | Documentar y preprar presentacion | 0d | 2018-03-29 14:00 | 2018-03-29 14:00 | 49 |  | 0d |  |

## Version 2 (saved 2018-04-24, file BETA_ALFA_Switch_de_distorción_ergonónico.mpp)

Note of the change: Commit de Entrega

Last finish 2018-03-29 → 2018-04-24 (+26d). Complete tasks 19 → 48.

Added:

| ID | Task | Duration | Start | Finish | Predecessors | Constraint | Resources |
| --- | --- | --- | --- | --- | --- | --- | --- |
| 43 | **Plan ALPHA BETA integration** | 36d | 2018-03-20 08:00 A | 2018-04-24 17:00 |  |  |  |
| 44 | Creación Proyecto Git Hub | 7h | 2018-03-29 08:30 A | 2018-03-29 16:30 A | 41 |  | David Bellomo |
| 45 | **Integración de HWs** | 1d | 2018-03-29 16:30 A | 2018-03-30 16:30 A |  |  |  |
| 46 | Integrar HW de instrumentación de Ofsset | 4h | 2018-03-29 16:30 A | 2018-03-30 11:30 A | 44 |  | David Bellomo |
| 47 | Integrar HW de Miografo 3rd Party | 4h | 2018-03-30 11:30 A | 2018-03-30 16:30 A | 46 |  | David Bellomo |
| 53 | Desarrollar SW de control de Audio | 4h | 2018-04-01 13:30 A | 2018-04-02 08:30 A | 51 |  | David Bellomo |
| 54 | Integrar SW de efectos de sonido | 3h | 2018-04-02 08:30 A | 2018-04-02 11:30 A | 53 |  | David Bellomo |
| 55 | Validar SW de salida de audio | 7h | 2018-04-02 11:30 A | 2018-04-03 10:30 A | 54 |  | David Bellomo |
| 56 | **Integración SW final** | 1d | 2018-04-03 10:30 A | 2018-04-04 10:30 A |  |  |  |
| 57 | Integrar SW de Control de Miógrafo con SW de control de audio | 3h | 2018-04-03 10:30 A | 2018-04-03 14:30 A | 55 |  | David Bellomo |
| 58 | Validar Integración con audio de Celular | 5h | 2018-04-03 14:30 A | 2018-04-04 10:30 A | 57 |  | David Bellomo |
| 59 | **Validación con Guitarra** | 0.62d | 2018-04-18 11:00 A | 2018-04-18 17:00 A |  |  |  |
| 60 | Validar la integración del sistema con el uso de una guitarra | 5h | 2018-04-18 11:00 A | 2018-04-18 17:00 A |  | finish no earlier than 2018-04-18 17:00 | David Bellomo; Chung; Gerardo |
| 61 | Elaboración de la Documentación y Presentación | 24h | 2018-04-22 08:00 A | 2018-04-24 17:00 | 42, 58 | finish no earlier than 2018-04-24 17:00 | Chung; David Bellomo; Gerardo |
| 62 | Final del Proyecto | 0d | 2018-03-20 08:00 A | 2018-03-20 08:00 A |  |  |  |

Removed: 27 Escribir SW de salida de audio; 28 Probar SW de salida de audio; 29 SW de salida de Audio terminado

Changed:

| ID | Task | Start | Finish | Duration | Complete | Total float | Predecessors | Other |
| --- | --- | --- | --- | --- | --- | --- | --- | --- |
| 7 | Resdiseñar Arquitectura de SW |  | 2018-03-21 12:00 A |  | 70% → 100% | 8.12d → none |  |  |
| 9 | **SW sistema minimo** | 2018-03-21 14:30 A → 2018-03-21 13:30 A | 2018-03-22 08:30 A → 2018-03-21 16:30 A (-1d) |  |  |  | none → 8 |  |
| 10 | Integrar Drivers | 2018-03-21 14:30 A → 2018-03-21 13:30 A | 2018-03-21 16:30 A → 2018-03-21 15:30 A |  |  |  | 14 → 8 |  |
| 11 | Integrar OS | 2018-03-21 16:30 A → 2018-03-21 15:30 A | 2018-03-22 08:30 A → 2018-03-21 16:30 A (-1d) |  |  |  |  |  |
| 12 | Sistema minimo terminado | 2018-03-22 08:30 A → 2018-03-21 16:30 A (-1d) | 2018-03-22 08:30 A → 2018-03-21 16:30 A (-1d) |  |  |  |  |  |
| 13 | Recibir HW de envio con Electromiografo |  |  |  |  |  | none → 8 |  |
| 14 | Comprar material segunda parte | 2018-03-21 13:30 A → 2018-03-22 08:00 A (+1d) | 2018-03-21 14:30 A → 2018-03-22 09:00 A (+1d) |  |  |  | 8 → 13 | resources David Bellomo → David Bellomo; Material |
| 15 | **Probar Electromiografo HW** | 2018-03-22 08:30 A → 2018-03-22 09:00 A | 2018-03-22 14:00 A → 2018-03-22 14:30 A |  |  |  |  |  |
| 16 | Medir Salida con osciloscopio | 2018-03-22 08:30 A → 2018-03-22 09:00 A | 2018-03-22 09:30 A → 2018-03-22 10:00 A |  |  |  | 13, 12 → 12, 14 |  |
| 17 | Entender Señal del electromiografo | 2018-03-22 09:30 A → 2018-03-22 10:00 A | 2018-03-22 11:00 A → 2018-03-22 11:30 A |  |  |  |  |  |
| 18 | Identificar mejor lugar para medir señal | 2018-03-22 11:00 A → 2018-03-22 11:30 A | 2018-03-22 14:00 A → 2018-03-22 14:30 A |  |  |  |  |  |
| 19 | Puntos de meidición identificados | 2018-03-22 14:00 A → 2018-03-22 14:30 A | 2018-03-22 14:00 A → 2018-03-22 14:30 A |  |  |  |  |  |
| 20 | **Prepar Hw de muestreo de Audio** | 2018-03-24 08:00 A → 2018-03-22 14:30 A (-2d) | 2018-03-24 16:00 A → 2018-03-23 13:30 A (-1d) |  |  |  |  |  |
| 21 | Ensablar circuito | 2018-03-24 08:00 A → 2018-03-22 14:30 A (-2d) | 2018-03-24 11:00 A → 2018-03-23 08:30 A (-1d) |  |  |  | 14, 12, 37 → 19 |  |
| 22 | Probar circuito | 2018-03-24 11:00 A → 2018-03-23 08:30 A (-1d) | 2018-03-24 16:00 A → 2018-03-23 13:30 A (-1d) |  |  |  |  |  |
| 23 | HW de muestreo terminado | 2018-03-24 16:00 A → 2018-03-23 13:30 A (-1d) | 2018-03-24 16:00 A → 2018-03-23 13:30 A (-1d) |  |  |  |  | resources none → David Bellomo |
| 24 | **Preparar HW de salida de Audio** | 2018-03-25 16:00 → 2018-03-23 13:30 A (-2d) | 2018-03-26 16:00 → 2018-03-24 13:30 A (-2d) |  | 0% → 100% | -2.88d → none |  |  |
| 25 | Ensamblar circuito | 2018-03-25 16:00 → 2018-03-23 13:30 A (-2d) | 2018-03-26 10:00 → 2018-03-23 16:30 A (-3d) |  | 0% → 100% | -2.88d → none | 14, 51 → 23 | was named Ensablar circuito |
| 26 | probar circuito | 2018-03-26 10:00 → 2018-03-23 16:30 A (-3d) | 2018-03-26 16:00 → 2018-03-24 13:30 A (-2d) |  | 0% → 100% | -2.88d → none |  |  |
| 27 | HW de salida de audio terminado | 2018-03-26 16:00 → 2018-03-24 13:30 A (-2d) | 2018-03-26 16:00 → 2018-03-24 13:30 A (-2d) |  | 0% → 100% | -2.88d → none |  |  |
| 28 | **Preparar SW de distorción** | 2018-03-27 15:00 → 2018-03-24 13:30 A (-3d) | 2018-03-28 16:00 → 2018-03-25 14:30 A (-3d) |  | 0% → 100% | -2.88d → none |  |  |
| 29 | Integar SW de muestreo con el de salida de audio | 2018-03-27 15:00 → 2018-03-24 13:30 A (-3d) | 2018-03-28 09:00 → 2018-03-24 16:30 A (-4d) |  | 0% → 100% | -2.88d → none | SW de salida de Audio terminado, 51 → 27 |  |
| 30 | Escribir una distorción de audio | 2018-03-28 09:00 → 2018-03-24 16:30 A (-4d) | 2018-03-28 12:00 → 2018-03-25 10:30 A (-3d) |  | 0% → 100% | -2.88d → none |  |  |
| 31 | Probar activación y desactivación del SW de distorción | 2018-03-28 13:00 → 2018-03-25 10:30 A (-3d) | 2018-03-28 16:00 → 2018-03-25 14:30 A (-3d) |  | 0% → 100% | -2.88d → none |  |  |
| 32 | SW de distoricion integrado y probado | 2018-03-28 16:00 → 2018-03-25 14:30 A (-3d) | 2018-03-28 16:00 → 2018-03-25 14:30 A (-3d) |  | 0% → 100% | -2.88d → none |  |  |
| 33 | **Prepar SW de medición del electromiografo** | 2018-03-22 14:00 → 2018-03-25 14:30 A (+3d) | 2018-03-23 17:00 → 2018-03-28 08:30 A (+5d) | 1.38d → 2.38d | 0% → 100% | 4.88d → none |  |  |
| 34 | Escribir SW de muestreo del electromiografo | 2018-03-22 14:00 → 2018-03-25 14:30 A (+3d) | 2018-03-22 17:00 → 2018-03-26 17:30 A (+4d) | 3h → 10.5h | 0% → 100% | 4.88d → none | 19 → 32 |  |
| 35 | Escribir SW de detección del movimiento | 2018-03-23 08:00 → 2018-03-26 17:30 A (+3d) | 2018-03-23 11:00 → 2018-03-27 14:30 A (+4d) | 3h → 5.5h | 0% → 100% | 4.88d → none |  |  |
| 36 | Probar SW de detección del electromiografo | 2018-03-23 11:00 → 2018-03-27 14:30 A (+4d) | 2018-03-23 17:00 → 2018-03-28 08:30 A (+5d) | 5h → 3h | 0% → 100% | 4.88d → none |  |  |
| 37 | SW de detección de movimiento terminado | 2018-03-23 17:00 → 2018-03-28 08:30 A (+5d) | 2018-03-23 17:00 → 2018-03-28 08:30 A (+5d) |  | 0% → 100% | 4.88d → none |  |  |
| 38 | **Integargración del sistema** | 2018-03-28 16:00 → 2018-03-28 08:30 A | 2018-03-29 14:00 → 2018-03-29 08:30 A | 0.75d → 1d | 0% → 100% | 0d → none |  |  |
| 39 | Integrar SW de muestreo y salida de audio con deteccion de movimiento | 2018-03-28 16:00 → 2018-03-28 08:30 A | 2018-03-29 09:00 → 2018-03-28 13:30 A (-1d) | 2h → 4h | 0% → 100% | 0d → none | 37, 32 → 37 |  |
| 40 | Pruebas de integración | 2018-03-29 09:00 → 2018-03-28 13:30 A (-1d) | 2018-03-29 14:00 → 2018-03-29 08:30 A |  | 0% → 100% | 0d → none |  |  |
| 41 | Sistema integrado y probado | 2018-03-29 14:00 → 2018-03-29 08:30 A | 2018-03-29 14:00 → 2018-03-29 08:30 A |  | 0% → 100% | 0d → none |  |  |
| 42 | Inicio del proceso de documentación y elaboración de la presentación | 2018-03-29 14:00 → 2018-03-29 08:30 A | 2018-03-29 14:00 → 2018-03-29 08:30 A |  | 0% → 100% | 0d → none |  | was named Documentar y preprar presentacion |
| 48 | **Prepar SW de muestreo de Audio** | 2018-03-24 16:00 → 2018-03-30 16:30 A (+6d) | 2018-03-25 16:00 → 2018-04-01 13:30 A (+7d) | 1d → 1.62d | 0% → 100% | -2.88d → none |  | was named Prepar SW de control |
| 49 | Desarrollar Codigo de muestreo de Audio | 2018-03-24 16:00 → 2018-03-30 16:30 A (+6d) | 2018-03-25 10:00 → 2018-03-31 14:30 A (+6d) | 3h → 6h | 0% → 100% | -2.88d → none | 23, 12 → 47 |  |
| 50 | Probar codigo de muestreo de audio | 2018-03-25 10:00 → 2018-03-31 14:30 A (+6d) | 2018-03-25 16:00 → 2018-04-01 13:30 A (+7d) | 5h → 7h | 0% → 100% | -2.88d → none |  |  |
| 51 | SW inicial de muestreo terminado | 2018-03-25 16:00 → 2018-04-01 13:30 A (+7d) | 2018-03-25 16:00 → 2018-04-01 13:30 A (+7d) |  | 0% → 100% | -2.88d → none |  | resources none → David Bellomo |
| 52 | **Preparar SW de salida de Audio** | 2018-03-26 16:00 → 2018-04-01 13:30 A (+6d) | 2018-03-27 15:00 → 2018-04-03 10:30 A (+7d) | 0.88d → 1.75d | 0% → 100% | -2.88d → none |  |  |
